# pico

Schedule from MS Project, 2015-03-16 to 2016-03-04, A marks actual dates.

## Calendars

- Standard: Mon-Fri 08:00-12:00, 13:00-17:00; Sat-Sun off.

## Resources

| Resource |
| --- |
| Management |
| Ahmad Rahman |
| Mubashir Baig |
| Abdul basit |
| Usman Irfan |
| Trainers |
| Technical Communicators |
| Deployment Team |

## Schedule

| ID | WBS | Task | Type | Duration | Start | Finish | Predecessors | Complete | Remaining | Total slack | Resources | Work | Actual work |
| --- | --- | --- | --- | --- | --- | --- | --- | --- | --- | --- | --- | --- | --- |
| 1 | 1 | **Scope** |  | 14d | 2015-03-16 A | 2015-04-02 A |  | 100% |  |  |  | 256h | 256h |
| 2 | 1.1 | **Preliminary Research** |  | 7d | 2015-03-16 A | 2015-03-24 A |  | 100% |  |  | Abdul basit; Ahmad Rahman; Usman Irfan | 168h | 168h |
| 3 | 1.1.1 | Domain selection |  | 1d | 2015-03-16 A | 2015-03-16 A |  | 100% |  |  |  |  |  |
| 4 | 1.1.2 | Topic Selection |  | 2d | 2015-03-17 A | 2015-03-18 A | 3 | 100% |  |  |  |  |  |
| 5 | 1.1.3 | Literature review |  | 4d | 2015-03-19 A | 2015-03-24 A | 4 | 100% |  |  |  |  |  |
| 6 | 1.2 | Determine project scope |  | 2d | 2015-03-25 A | 2015-03-26 A | 5 | 100% |  |  | Ahmad Rahman | 16h | 16h |
| 7 | 1.3 | Define preliminary resources |  | 1d | 2015-03-27 A | 2015-03-27 A | 6 | 100% |  |  | Ahmad Rahman | 8h | 8h |
| 8 | 1.4 | **Secure core resources** |  | 4d | 2015-03-30 A | 2015-04-02 A | 7 | 100% |  |  | Ahmad Rahman; Abdul basit | 64h | 64h |
| 9 | 1.4.1 | Secure a server with Nvidia Tesla |  | 1d | 2015-03-30 A | 2015-03-30 A |  | 100% |  |  |  |  |  |
| 10 | 1.4.2 | Secure two instances of Nvidia Jetson TK1 |  | 2d | 2015-03-31 A | 2015-04-01 A | 9 | 100% |  |  |  |  |  |
| 11 | 1.4.3 | Secure gigabit ethernet switch |  | 1d | 2015-04-02 A | 2015-04-02 A | 10 | 100% |  |  |  |  |  |
| 12 | 1.5 | Scope complete | milestone | 0d | 2015-04-02 A | 2015-04-02 A | 11 | 100% |  |  |  |  |  |
| 13 | 2 | **Analysis/Software Requirements** |  | 52.25d | 2015-04-03 A | 2015-06-16 |  | 99% | 0d | 188.75d |  | 1190h | 1190h |
| 14 | 2.1 | Conduct needs analysis |  | 3d | 2015-04-03 A | 2015-04-07 | 12 | 99% | 0d | 238d | Abdul basit; Usman Irfan | 24h | 24h |
| 15 | 2.2 | Proof of concept (Installation of Hadoop on VM) |  | 1w | 2015-04-03 A | 2015-04-09 A | 12 | 100% |  |  | Abdul basit | 40h | 40h |
| 16 | 2.3 | Proof of concept (Installation of Hadoop on Jetson TK1) |  | 10d | 2015-04-03 A | 2015-04-16 A | 12 | 100% |  |  | Ahmad Rahman | 80h | 80h |
| 17 | 2.4 | Proof of concept (Installation and Benchmarking MARS on Jetson TK1) |  | 10d | 2015-04-03 A | 2015-04-16 A | 12 | 100% |  |  | Ahmad Rahman | 80h | 80h |
| 18 | 2.5 | Draft preliminary framework specifications |  | 10d | 2015-04-08 A | 2015-04-21 A | 14 | 100% |  |  | Ahmad Rahman; Abdul basit | 160h | 160h |
| 19 | 2.6 | Exam Break |  | 30d | 2015-04-22 A | 2015-06-02 A | 18 | 100% |  |  | Abdul basit; Ahmad Rahman; Usman Irfan | 720h | 720h |
| 20 | 2.7 | Review software specifications with Supervisor |  | 2h | 2015-06-03 A | 2015-06-03 A | 19 | 100% |  |  | Ahmad Rahman; Abdul basit; Usman Irfan | 6h | 6h |
| 21 | 2.8 | Incorporate feedback on software specifications |  | 1d | 2015-06-03 A | 2015-06-04 A | 20 | 100% |  |  | Ahmad Rahman; Abdul basit | 16h | 16h |
| 22 | 2.9 | Develop schedule |  | 2d | 2015-06-04 A | 2015-06-08 A | 21 | 100% |  |  | Ahmad Rahman | 16h | 16h |
| 23 | 2.10 | Obtain approvals to proceed (concept, schedule, scope) |  | 1d | 2015-06-08 A | 2015-06-09 A | 22 | 100% |  |  | Ahmad Rahman | 8h | 8h |
| 24 | 2.11 | Secure required resources |  | 1w | 2015-06-09 A | 2015-06-16 A | 23 | 100% |  |  | Ahmad Rahman | 40h | 40h |
| 25 | 2.12 | Analysis complete | milestone | 0d | 2015-06-16 A | 2015-06-16 A | 24 | 100% |  |  |  |  |  |

| ID | WBS | Task | Type | Duration | Start | Finish | Predecessors | Complete | Remaining | Total slack | Free slack | Resources | Work | Actual work |
| --- | --- | --- | --- | --- | --- | --- | --- | --- | --- | --- | --- | --- | --- | --- |
| 26 | 3 | **Design** |  | 42d | 2015-06-16 A | 2015-08-13 A |  | 100% |  |  |  |  | 696h | 696h |
| 27 | 3.1 | Review preliminary software specifications |  | 1d | 2015-06-16 A | 2015-06-17 A | 25 | 100% |  |  |  | Mubashir Baig; Abdul basit | 16h | 16h |
| 28 | 3.2 | Develop functional specifications |  | 7d | 2015-06-17 A | 2015-06-26 A | 27 | 100% |  |  |  | Abdul basit; Ahmad Rahman; Usman Irfan | 168h | 168h |
| 29 | 3.3 | Develop architecture diagrams based on functional specifications |  | 30d | 2015-06-26 A | 2015-08-07 A | 28 | 100% |  |  |  | Ahmad Rahman; Usman Irfan | 480h | 480h |
| 30 | 3.4 | Review functional specifications |  | 2d | 2015-08-07 A | 2015-08-11 A | 29 | 100% |  |  |  | Ahmad Rahman | 16h | 16h |
| 31 | 3.5 | Incorporate feedback into functional specifications |  | 1d | 2015-08-11 A | 2015-08-12 A | 30 | 100% |  |  |  | Ahmad Rahman | 8h | 8h |
| 32 | 3.6 | Obtain approval to proceed |  | 1d | 2015-08-12 A | 2015-08-13 A | 31 | 100% |  |  |  | Ahmad Rahman | 8h | 8h |
| 33 | 3.7 | Design complete | milestone | 0d | 2015-08-13 A | 2015-08-13 A | 32 | 100% |  |  |  |  |  |  |
| 34 | 4 | **Development** |  | 54d | 2015-08-13 A | 2015-10-28 |  | 99% | 0d | 92.75d |  |  | 1192h | 1192h |
| 35 | 4.1 | Review functional specifications |  | 1d | 2015-08-13 A | 2015-08-14 A | 33 | 100% |  |  |  | Ahmad Rahman | 8h | 8h |
| 36 | 4.2 | Assign development tasks |  | 1d | 2015-08-14 A | 2015-08-17 A | 35 | 100% |  |  |  | Ahmad Rahman | 8h | 8h |
| 37 | 4.3 | Develop code (Mappers) |  | 30d | 2015-08-17 A | 2015-09-28 A | 36 | 100% |  |  |  | Ahmad Rahman | 240h | 240h |
| 38 | 4.4 | Develop code (Sorter) |  | 30d | 2015-08-17 A | 2015-09-28 A | 36 | 100% |  |  |  | Abdul basit | 240h | 240h |
| 39 | 4.5 | Develop code (Reducers) |  | 30d | 2015-08-17 A | 2015-09-28 A | 36 | 100% |  |  |  | Usman Irfan | 240h | 240h |
| 40 | 4.6 | Developer testing (primary debugging) |  | 7d | 2015-09-28 A | 2015-10-07 | 39 | 99% | 0d | 107.75d |  | Usman Irfan; Abdul basit | 56h | 56h |
| 41 | 4.7 | Exam Break |  | 2w | 2015-10-07 A | 2015-10-21 A | 40 | 100% |  |  |  | Abdul basit; Ahmad Rahman; Usman Irfan | 240h | 240h |
| 42 | 4.8 | Develop benchmark (wordcount) |  | 1w | 2015-10-21 A | 2015-10-28 A | 41 | 100% |  |  |  | Ahmad Rahman | 40h | 40h |
| 43 | 4.9 | Develop benchmark (matrix multiplication) |  | 1w | 2015-10-07 A | 2015-10-14 A | 40 | 100% |  |  |  | Usman Irfan | 40h | 40h |
| 44 | 4.10 | Develop benchmark (kmeans) |  | 1w | 2015-10-07 A | 2015-10-14 A | 40 | 100% |  |  |  | Ahmad Rahman | 40h | 40h |
| 45 | 4.11 | Develop benchmark (linear regression) |  | 1w | 2015-10-07 A | 2015-10-14 A | 40 | 100% |  |  |  | Abdul basit | 40h | 40h |
| 46 | 4.12 | Development complete | milestone | 0d | 2015-10-14 A | 2015-10-14 A | 45 | 100% |  |  |  |  |  |  |
| 47 | 5 | **Testing** |  | 32d | 2015-10-14 A | 2015-11-27 |  | 99% | 0d | 70.75d |  |  | 416h | 416h |
| 48 | 5.1 | Develop unit test plans |  | 2d | 2015-10-14 A | 2015-10-16 | 45 | 99% | 0d | 2d | 0d | Usman Irfan; Abdul basit | 16h | 16h |
| 49 | 5.2 | Develop integration test plans |  | 2d | 2015-10-16 A | 2015-10-20 | 48 | 99% | 0d | 98.75d |  | Usman Irfan; Abdul basit | 16h | 16h |
| 50 | 5.3 | Exam Break |  | 2w | 2015-10-20 A | 2015-11-03 A | 49 | 100% |  |  |  | Abdul basit; Ahmad Rahman; Usman Irfan | 240h | 240h |

| ID | WBS | Task | Type | Duration | Start | Finish | Predecessors | Complete | Remaining | Actual finish | Total slack | Free slack | Resources | Work | Actual work |
| --- | --- | --- | --- | --- | --- | --- | --- | --- | --- | --- | --- | --- | --- | --- | --- |
| 51 | 5.4 | **Unit Testing** |  | 11d | 2015-11-03 A | 2015-11-18 |  | 99% | 0d |  | 77.75d |  |  | 88h | 88h |
| 52 | 5.4.1 | Review modular code |  | 5d | 2015-11-03 A | 2015-11-10 A | 50 | 100% |  |  |  |  | Abdul basit | 40h | 40h |
| 53 | 5.4.2 | Test component modules to product specifications |  | 1d | 2015-11-10 A | 2015-11-11 | 52 | 99% | 0d |  | 1d | 0d | Usman Irfan; Abdul basit | 8h | 8h |
| 54 | 5.4.3 | Identify anomalies to product specifications |  | 1d | 2015-11-11 A | 2015-11-12 | 53 | 99% | 0d |  | 81.75d |  | Usman Irfan; Abdul basit | 8h | 8h |
| 55 | 5.4.4 | Modify code |  | 2d | 2015-11-12 A | 2015-11-16 A | 54 | 100% |  |  |  |  | Usman Irfan | 16h | 16h |
| 56 | 5.4.5 | Re-test modified code |  | 2d | 2015-11-16 A | 2015-11-18 A | 55 | 100% |  |  |  |  | Abdul basit | 16h | 16h |
| 57 | 5.4.6 | Unit testing complete | milestone | 0d | 2015-11-18 A | 2015-11-18 A | 56 | 100% |  |  |  |  |  |  |  |
| 58 | 5.5 | **Integration Testing** |  | 7d | 2015-11-18 A | 2015-11-27 |  | 99% | 0d |  | 70.75d |  |  | 56h | 56h |
| 59 | 5.5.1 | Test module integration |  | 3d | 2015-11-18 A | 2015-11-23 | 57 | 99% | 0d |  | 1d | 0d | Usman Irfan; Abdul basit | 24h | 24h |
| 60 | 5.5.2 | Identify anomalies to specifications |  | 1d | 2015-11-23 A | 2015-11-24 | 59 | 99% | 0d |  | 2d | 0d | Usman Irfan; Abdul basit | 8h | 8h |
| 61 | 5.5.3 | Modify code |  | 2d | 2015-11-24 A | 2015-11-26 | 60 | 99% | 0d |  | 1d | 0d | Usman Irfan; Abdul basit | 16h | 16h |
| 62 | 5.5.4 | Re-test modified code |  | 1d | 2015-11-26 A | 2015-11-27 | 61 | 99% | 0d |  | 70.75d |  | Usman Irfan; Abdul basit | 8h | 8h |
| 63 | 5.5.5 | Integration testing complete | milestone | 0d | 2015-11-27 A | 2015-11-27 A | 62 | 100% |  |  |  |  |  |  |  |
| 64 | 6 | **Documentation** |  | 71d | 2015-11-27 A | 2016-03-04 |  | 100% |  | 2016-02-10 |  |  |  | 1024h | 1024h |
| 65 | 6.1 | Develop final report specification |  | 1d | 2015-11-27 A | 2015-11-30 A | 63 | 100% |  |  |  |  | Abdul basit; Ahmad Rahman | 16h | 16h |
| 66 | 6.2 | Develop final report |  | 1w | 2015-11-30 A | 2015-12-07 A | 65 | 100% |  |  |  |  | Abdul basit; Ahmad Rahman | 80h | 80h |
| 67 | 6.3 | Review final report |  | 3d | 2015-12-07 A | 2015-12-10 A | 66 | 100% |  |  |  |  | Ahmad Rahman | 24h | 24h |
| 68 | 6.4 | Incorporate final report feedback |  | 2d | 2015-12-10 A | 2015-12-14 A | 67 | 100% |  |  |  |  | Abdul basit | 16h | 16h |
| 69 | 6.5 | Develop library documentation specifications |  | 1d | 2015-12-14 A | 2015-12-15 A | 68 | 100% |  |  |  |  | Ahmad Rahman; Usman Irfan | 16h | 16h |
| 70 | 6.6 | Develop library documentation |  | 1.5w | 2015-12-15 A | 2015-12-24 A | 69 | 100% |  |  |  |  | Ahmad Rahman; Usman Irfan | 120h | 120h |
| 71 | 6.7 | Exam Break |  | 30d | 2015-12-24 A | 2016-02-04 A | 70 | 100% |  |  |  |  | Abdul basit; Ahmad Rahman; Usman Irfan | 720h | 720h |
| 72 | 6.8 | Review all library documentation |  | 2d | 2016-02-04 A | 2016-02-08 A | 71 | 100% |  |  |  |  | Ahmad Rahman | 16h | 16h |
| 73 | 6.9 | Incorporate library documentation feedback |  | 2d | 2016-02-08 A | 2016-02-10 A | 72 | 100% |  |  |  |  | Usman Irfan | 16h | 16h |
| 74 | 6.10 | Documentation complete | milestone | 0d | 2016-02-10 A | 2016-02-10 A | 73 | 100% |  |  |  |  |  |  |  |
